ID,Name,WBS,Predecessors,Successors,Baseline_Start,Baseline_End,Duration_Plan,Total_Cost_Plan,Fixed_Cost,Variable_Cost,Resource_Cost,Duration_Plan_Days,WBS_Level,Is_Critical_Material,Material_Type,Lead_Time_Days,Buffer_Days,Criticality,Material_Notes,Material_Readiness_Date,Planned_Anticipation_Days,Supply_Delay_Days,Material_Status,Supply_Risk_Score,Material_Alarm,WBS_norm,WBS_Has_Children,Element_Type,Is_Terminal,Is_Executable
0,Wind Farm,1,,,2008-10-20 08:00:00,2010-10-22 17:00:00,525d,21369835.5102008,13951666.9396289,,,525,1,False,Non-Critical,,,,,,,0,Non-Critical,0,OK,1,True,SUMMARY,False,False
1,Wind Farm,1.1,,,2008-10-20 08:00:00,2010-10-22 17:00:00,525d,21369835.5102008,13951666.9396289,,,525,2,False,Non-Critical,,,,,,,0,Non-Critical,0,OK,1.1,True,SUMMARY,False,False
2,Vergunningen,1.1.1,,,2009-02-10 17:00:00,2009-03-02 17:00:00,14d,0.0,0.0,,,14,3,False,Non-Critical,,,,,,,0,Non-Critical,0,OK,1.1.1,True,SUMMARY,False,False
3,Milieuvergunning,1.1.1.1,,,2009-02-12 17:00:00,2009-02-12 17:00:00,0,0.0,0.0,0.0,0.0,0,4,False,Non-Critical,,,,,,,0,Non-Critical,0,OK,1.1.1.1,False,ZERO_DURATION_REVIEW,True,False
4,Bouwvergunning,1.1.1.2,,,2009-02-10 17:00:00,2009-02-10 17:00:00,0,0.0,0.0,0.0,0.0,0,4,False,Non-Critical,,,,,,,0,Non-Critical,0,OK,1.1.1.2,False,ZERO_DURATION_REVIEW,True,False
5,RUP,1.1.1.3,,FS16;FS17,2009-03-02 17:00:00,2009-03-02 17:00:00,0,0.0,0.0,0.0,0.0,0,4,False,Non-Critical,,,,,,,0,Non-Critical,0,OK,1.1.1.3,False,ZERO_DURATION_REVIEW,True,False
6,studies,1.1.2,,,2008-10-20 08:00:00,2009-11-27 17:00:00,290d,309795.075454712,272401.395507812,,,290,3,False,Non-Critical,,,,,,,0,Non-Critical,0,OK,1.1.2,True,SUMMARY,False,False
7,sonderingen,1.1.2.1,,,2009-02-05 08:00:00,2009-03-30 17:00:00,38d,30387.9796142578,21988.1396484375,,,38,4,False,Non-Critical,,,,,,,0,Non-Critical,0,OK,1.1.2.1,True,SUMMARY,False,False
8,offerte,1.1.2.1.1,,FS9,2009-02-05 08:00:00,2009-02-18 17:00:00,10d,6365.2998046875,5365.2998046875,1000.0,0.0,10,5,False,Non-Critical,,,,,,,0,Non-Critical,0,OK,1.1.2.1.1,False,TERMINAL_ACTIVITY,True,True
9,sondering,1.1.2.1.2,8FS,FS10;SF21,2009-02-19 08:00:00,2009-03-10 17:00:00,14d,15511.0998535156,9111.419921875,6399.67993164062,0.0,14,5,False,Non-Critical,,,,,,,0,Non-Critical,0,OK,1.1.2.1.2,False,TERMINAL_ACTIVITY,True,True
10,sonderingsverslag,1.1.2.1.3,9FS,FS14,2009-03-11 08:00:00,2009-03-30 17:00:00,14d,8511.57995605469,7511.419921875,1000.16003417969,0.0,14,5,False,Non-Critical,,,,,,,0,Non-Critical,0,OK,1.1.2.1.3,False,TERMINAL_ACTIVITY,True,True
11,Aansluitingen,1.1.2.2,,,2008-10-20 08:00:00,2009-10-09 17:00:00,255d,147808.272109985,136815.072265625,,,255,4,False,Non-Critical,,,,,,,0,Non-Critical,0,OK,1.1.2.2,True,SUMMARY,False,False
12,orientatiestudie,1.1.2.2.1,,FS13;FS16;FS18,2008-10-20 08:00:00,2009-03-13 17:00:00,105d,61333.6209335327,56335.62109375,4997.99983978272,0.0,105,5,False,Non-Critical,,,,,,,0,Non-Critical,0,OK,1.1.2.2.1,False,TERMINAL_ACTIVITY,True,True
13,detailstudie,1.1.2.2.2,12FS,FS14,2009-03-16 08:00:00,2009-07-17 17:00:00,90d,53284.4719161987,48287.671875,4996.80004119873,0.0,90,5,False,Non-Critical,,,,,,,0,Non-Critical,0,OK,1.1.2.2.2,False,TERMINAL_ACTIVITY,True,True
14,financieel plan,1.1.2.2.3,13FS;10FS,,2009-07-20 08:00:00,2009-10-09 17:00:00,60d,33190.1792602539,32191.779296875,998.399963378904,0.0,60,5,False,Non-Critical,,,,,,,0,Non-Critical,0,OK,1.1.2.2.3,False,TERMINAL_ACTIVITY,True,True
15,uitvoeringsplan,1.1.2.3,,,2009-03-03 08:00:00,2009-11-27 17:00:00,194d,131598.823730469,113598.18359375,,,194,4,False,Non-Critical,,,,,,,0,Non-Critical,0,OK,1.1.2.3,True,SUMMARY,False,False
16,roads and hardstands,1.1.2.3.1,5FS;12FS,,2009-03-16 08:00:00,2009-04-02 17:00:00,14d,16511.7399902344,7511.419921875,9000.32006835938,0.0,14,5,False,Non-Critical,,,,,,,0,Non-Critical,0,OK,1.1.2.3.1,False,TERMINAL_ACTIVITY,True,True
17,contracten,1.1.2.3.2,5FS,FS18,2009-03-03 08:00:00,2009-03-20 17:00:00,14d,16511.7399902344,7511.419921875,9000.32006835938,0.0,14,5,False,Non-Critical,,,,,,,0,Non-Critical,0,OK,1.1.2.3.2,False,TERMINAL_ACTIVITY,True,True
18,extra vergunningen,1.1.2.3.3,12FS;17FS,FS20,2009-03-23 08:00:00,2009-11-27 17:00:00,180d,98575.34375,98575.34375,0.0,0.0,180,5,False,Non-Critical,,,,,,,0,Non-Critical,0,OK,1.1.2.3.3,False,TERMINAL_ACTIVITY,True,True
19,preconstruction,1.1.3,,,2009-02-12 08:00:00,2010-01-27 17:00:00,250d,1216717.08203125,162876.72265625,,,250,3,False,Non-Critical,,,,,,,0,Non-Critical,0,OK,1.1.3,True,SUMMARY,False,False
20,Roads and hardstands,1.1.3.1,24SF;18FS,SF22,2010-01-08 08:00:00,2010-01-27 17:00:00,14d,1111351.78125,107511.421875,1003840.359375,0.0,14,4,False,Non-Critical,,,,,,,0,Non-Critical,0,OK,1.1.3.1,False,TERMINAL_ACTIVITY,True,True
21,Mark NMP pipe,1.1.3.2,9SF,,2009-02-12 08:00:00,2009-02-18 17:00:00,5d,52682.650390625,27682.650390625,25000.0,0.0,5,4,False,Non-Critical,,,,,,,0,Non-Critical,0,OK,1.1.3.2,False,TERMINAL_ACTIVITY,True,True
22,Mark NMP pipe,1.1.3.3,20SF,,2010-01-01 08:00:00,2010-01-07 17:00:00,5d,52682.650390625,27682.650390625,25000.0,0.0,5,4,False,Non-Critical,,,,,,,0,Non-Critical,0,OK,1.1.3.3,False,TERMINAL_ACTIVITY,True,True
23,Foundations,1.1.4,,,2010-01-28 08:00:00,2010-08-25 17:00:00,150d,1546009.55535156,629507.946464842,,,150,3,True,Foundation,75.0,14.0,Medium,Obra civil. Menos long-lead que los componentes de turbina.,2010-01-14 08:00:00,14.0,7,At Risk,42,WARNING,1.1.4,True,SUMMARY,False,False
24,settlement on construction site,1.1.4.1,26SF,SF20,2010-01-28 08:00:00,2010-02-03 17:00:00,5d,2682.64990234375,2682.64990234375,0.0,0.0,5,4,False,Non-Critical,,,,,,,0,Non-Critical,0,OK,1.1.4.1,False,TERMINAL_ACTIVITY,True,True
25,Piling,1.1.4.2,,,2010-02-04 08:00:00,2010-07-07 17:00:00,110d,508182.657226563,155682.2421875,,,110,4,False,Non-Critical,,,,,,,0,Non-Critical,0,OK,1.1.4.2,True,SUMMARY,False,False
26,foundation 1,1.1.4.2.1,34SF,SF24,2010-02-04 08:00:00,2010-02-10 17:00:00,5d,72597.5224609376,22240.3203125,50357.2021484376,0.0,5,5,True,Foundation,75.0,14.0,Medium,Obra civil. Menos long-lead que los componentes de turbina.,2010-01-21 08:00:00,14.0,4,At Risk,39,WARNING,1.1.4.2.1,False,TERMINAL_ACTIVITY,True,True
27,foundation 2,1.1.4.2.2,35SF,,2010-02-18 08:00:00,2010-02-24 17:00:00,5d,72597.5224609376,22240.3203125,50357.2021484376,0.0,5,5,True,Foundation,75.0,14.0,Medium,Obra civil. Menos long-lead que los componentes de turbina.,2010-02-04 08:00:00,14.0,8,Delayed,68,WARNING,1.1.4.2.2,False,TERMINAL_ACTIVITY,True,True
28,foundation 3,1.1.4.2.3,36SF,,2010-03-04 08:00:00,2010-03-10 17:00:00,5d,72597.5224609376,22240.3203125,50357.2021484376,0.0,5,5,True,Foundation,75.0,14.0,Medium,Obra civil. Menos long-lead que los componentes de turbina.,2010-02-18 08:00:00,14.0,14,Delayed,74,WARNING,1.1.4.2.3,False,TERMINAL_ACTIVITY,True,True
29,foundation 4,1.1.4.2.4,37SF,,2010-03-18 08:00:00,2010-03-24 17:00:00,5d,72597.5224609376,22240.3203125,50357.2021484376,0.0,5,5,True,Foundation,75.0,14.0,Medium,Obra civil. Menos long-lead que los componentes de turbina.,2010-03-04 08:00:00,14.0,4,At Risk,39,WARNING,1.1.4.2.4,False,TERMINAL_ACTIVITY,True,True
30,foundation 5,1.1.4.2.5,38SF,,2010-05-18 08:00:00,2010-05-24 17:00:00,5d,72597.5224609376,22240.3203125,50357.2021484376,0.0,5,5,True,Foundation,75.0,14.0,Medium,Obra civil. Menos long-lead que los componentes de turbina.,2010-05-04 08:00:00,14.0,4,At Risk,39,WARNING,1.1.4.2.5,False,TERMINAL_ACTIVITY,True,True
31,foundation 6,1.1.4.2.6,39SF,,2010-06-09 08:00:00,2010-06-15 17:00:00,5d,72597.5224609376,22240.3203125,50357.2021484376,0.0,5,5,True,Foundation,75.0,14.0,Medium,Obra civil. Menos long-lead que los componentes de turbina.,2010-05-26 08:00:00,14.0,16,Critical Delay,96,CRITICAL,1.1.4.2.6,False,TERMINAL_ACTIVITY,True,True
32,foundation 7,1.1.4.2.7,40SF,,2010-07-01 08:00:00,2010-07-07 17:00:00,5d,72597.5224609376,22240.3203125,50357.2021484376,0.0,5,5,True,Foundation,75.0,14.0,Medium,Obra civil. Menos long-lead que los componentes de turbina.,2010-06-17 08:00:00,14.0,11,Delayed,71,WARNING,1.1.4.2.7,False,TERMINAL_ACTIVITY,True,True
33,Concrete works foundations,1.1.4.3,,,2010-02-11 08:00:00,2010-07-28 17:00:00,120d,1035144.17822266,471142.984375,,,120,4,True,Foundation,75.0,14.0,Medium,Obra civil. Menos long-lead que los componentes de turbina.,2010-01-28 08:00:00,14.0,2,At Risk,37,WARNING,1.1.4.3,True,SUMMARY,False,False
34,foundation 1,1.1.4.3.1,42SF,SF26,2010-02-11 08:00:00,2010-03-03 17:00:00,15d,147877.739746094,67306.140625,80571.5991210937,0.0,15,5,True,Foundation,75.0,14.0,Medium,Obra civil. Menos long-lead que los componentes de turbina.,2010-01-28 08:00:00,14.0,8,Delayed,68,WARNING,1.1.4.3.1,False,TERMINAL_ACTIVITY,True,True
35,foundation 2,1.1.4.3.2,43SF,SF27,2010-02-25 08:00:00,2010-03-17 17:00:00,15d,147877.739746094,67306.140625,80571.5991210937,0.0,15,5,True,Foundation,75.0,14.0,Medium,Obra civil. Menos long-lead que los componentes de turbina.,2010-02-11 08:00:00,14.0,2,At Risk,37,WARNING,1.1.4.3.2,False,TERMINAL_ACTIVITY,True,True
36,foundation 3,1.1.4.3.3,44SF,SF28,2010-03-11 08:00:00,2010-03-31 17:00:00,15d,147877.739746094,67306.140625,80571.5991210937,0.0,15,5,True,Foundation,75.0,14.0,Medium,Obra civil. Menos long-lead que los componentes de turbina.,2010-02-25 08:00:00,14.0,2,At Risk,37,WARNING,1.1.4.3.3,False,TERMINAL_ACTIVITY,True,True
37,foundation 4,1.1.4.3.4,45SF,SF29,2010-03-25 08:00:00,2010-04-14 17:00:00,15d,147877.739746094,67306.140625,80571.5991210937,0.0,15,5,True,Foundation,75.0,14.0,Medium,Obra civil. Menos long-lead que los componentes de turbina.,2010-03-11 08:00:00,14.0,6,At Risk,41,WARNING,1.1.4.3.4,False,TERMINAL_ACTIVITY,True,True
38,foundation 5,1.1.4.3.5,46SF,SF30,2010-05-25 08:00:00,2010-06-14 17:00:00,15d,147877.739746094,67306.140625,80571.5991210937,0.0,15,5,True,Foundation,75.0,14.0,Medium,Obra civil. Menos long-lead que los componentes de turbina.,2010-05-11 08:00:00,14.0,0,On Track,10,OK,1.1.4.3.5,False,TERMINAL_ACTIVITY,True,True
39,foundation 6,1.1.4.3.6,47SF,SF31,2010-06-16 08:00:00,2010-07-06 17:00:00,15d,147877.739746094,67306.140625,80571.5991210937,0.0,15,5,True,Foundation,75.0,14.0,Medium,Obra civil. Menos long-lead que los componentes de turbina.,2010-06-02 08:00:00,14.0,0,On Track,10,OK,1.1.4.3.6,False,TERMINAL_ACTIVITY,True,True
40,foundation 7,1.1.4.3.7,48SF,SF32,2010-07-08 08:00:00,2010-07-28 17:00:00,15d,147877.739746094,67306.140625,80571.5991210937,0.0,15,5,True,Foundation,75.0,14.0,Medium,Obra civil. Menos long-lead que los componentes de turbina.,2010-06-24 08:00:00,14.0,3,At Risk,38,WARNING,1.1.4.3.7,False,TERMINAL_ACTIVITY,True,True
41,Setting of concrete,1.1.4.4,,,2010-03-04 08:00:00,2010-08-25 17:00:00,125d,0.0699999984353781,0.0699999984353781,,,125,4,False,Non-Critical,,,,,,,0,Non-Critical,0,OK,1.1.4.4,True,SUMMARY,False,False
42,setting concrete 1,1.1.4.4.1,52SF,SF34,2010-03-04 08:00:00,2010-03-31 17:00:00,20d,0.00999999977648258,0.00999999977648258,0.0,0.0,20,5,False,Non-Critical,,,,,,,0,Non-Critical,0,OK,1.1.4.4.1,False,TERMINAL_ACTIVITY,True,True
43,setting concrete 2,1.1.4.4.2,58SF,SF35,2010-03-18 08:00:00,2010-04-14 17:00:00,20d,0.00999999977648258,0.00999999977648258,0.0,0.0,20,5,False,Non-Critical,,,,,,,0,Non-Critical,0,OK,1.1.4.4.2,False,TERMINAL_ACTIVITY,True,True
44,setting concrete 3,1.1.4.4.3,64SF,SF36,2010-04-01 08:00:00,2010-04-28 17:00:00,20d,0.00999999977648258,0.00999999977648258,0.0,0.0,20,5,False,Non-Critical,,,,,,,0,Non-Critical,0,OK,1.1.4.4.3,False,TERMINAL_ACTIVITY,True,True
45,setting concrete 4,1.1.4.4.4,70SF,SF37,2010-04-15 08:00:00,2010-05-12 17:00:00,20d,0.00999999977648258,0.00999999977648258,0.0,0.0,20,5,False,Non-Critical,,,,,,,0,Non-Critical,0,OK,1.1.4.4.4,False,TERMINAL_ACTIVITY,True,True
46,setting concrete 5,1.1.4.4.5,76SF,SF38,2010-06-15 08:00:00,2010-07-12 17:00:00,20d,0.00999999977648258,0.00999999977648258,0.0,0.0,20,5,False,Non-Critical,,,,,,,0,Non-Critical,0,OK,1.1.4.4.5,False,TERMINAL_ACTIVITY,True,True
47,setting concrete 6,1.1.4.4.6,82SF,SF39,2010-07-07 08:00:00,2010-08-03 17:00:00,20d,0.00999999977648258,0.00999999977648258,0.0,0.0,20,5,False,Non-Critical,,,,,,,0,Non-Critical,0,OK,1.1.4.4.6,False,TERMINAL_ACTIVITY,True,True
48,setting concrete 7,1.1.4.4.7,88SF,SF40,2010-07-29 08:00:00,2010-08-25 17:00:00,20d,0.00999999977648258,0.00999999977648258,0.0,0.0,20,5,False,Non-Critical,,,,,,,0,Non-Critical,0,OK,1.1.4.4.7,False,TERMINAL_ACTIVITY,True,True
49,Windturbines,1.1.5,,,2010-03-31 17:00:00,2010-10-22 17:00:00,147d,16784528.0628662,12570195.4637451,,,147,3,False,Non-Critical,,,,,,,0,Non-Critical,0,OK,1.1.5,True,SUMMARY,False,False
50,Tower,1.1.5.1,,,2010-03-31 17:00:00,2010-09-16 17:00:00,121d,7401145.5,5286146.46875,,,121,4,True,Tower,240.0,21.0,Critical,Long-lead. Transporte especial. Secuencia de montaje estricta.,2010-03-10 17:00:00,21.0,12,Delayed,72,WARNING,1.1.5.1,True,SUMMARY,False,False
51,WEC 1,1.1.5.1.1,,,2010-03-31 17:00:00,2010-04-22 17:00:00,16d,1057306.5,755163.78125,,,16,5,False,Non-Critical,,,,,,,0,Non-Critical,0,OK,1.1.5.1.1,True,SUMMARY,False,False
52,Pre installation,1.1.5.1.1.1,,SF42;FS53,2010-03-31 17:00:00,2010-03-31 17:00:00,0,0.0,0.0,0.0,0.0,0,6,False,Non-Critical,,,,,,,0,Non-Critical,0,OK,1.1.5.1.1.1,False,ZERO_DURATION_REVIEW,True,False
53,Installation tower,1.1.5.1.1.2,52FS,FS54;FS58;FS59,2010-04-01 08:00:00,2010-04-14 17:00:00,10d,660816.57421875,471977.375,188839.19921875,0.0,10,6,True,Tower,240.0,21.0,Critical,Long-lead. Transporte especial. Secuencia de montaje estricta.,2010-03-11 08:00:00,21.0,21,Delayed,81,WARNING,1.1.5.1.1.2,False,TERMINAL_ACTIVITY,True,True
54,stressing tower,1.1.5.1.1.3,53FS,FS55,2010-04-15 08:00:00,2010-04-16 17:00:00,2d,132163.30859375,94395.46875,37767.8398437501,0.0,2,6,True,Tower,240.0,21.0,Critical,Long-lead. Transporte especial. Secuencia de montaje estricta.,2010-03-25 08:00:00,21.0,14,Delayed,74,WARNING,1.1.5.1.1.3,False,TERMINAL_ACTIVITY,True,True
55,injection of tower,1.1.5.1.1.4,54FS,FS56,2010-04-19 08:00:00,2010-04-20 17:00:00,2d,132163.30859375,94395.46875,37767.8398437501,0.0,2,6,True,Tower,240.0,21.0,Critical,Long-lead. Transporte especial. Secuencia de montaje estricta.,2010-03-29 08:00:00,21.0,11,Delayed,71,WARNING,1.1.5.1.1.4,False,TERMINAL_ACTIVITY,True,True
56,Finish,1.1.5.1.1.5,55FS,FS94;FS151,2010-04-21 08:00:00,2010-04-22 17:00:00,2d,132163.30859375,94395.46875,37767.8398437501,0.0,2,6,False,Non-Critical,,,,,,,0,Non-Critical,0,OK,1.1.5.1.1.5,False,TERMINAL_ACTIVITY,True,True
57,WEC 2,1.1.5.1.2,,,2010-04-14 17:00:00,2010-05-06 17:00:00,16d,1057306.5,755163.78125,,,16,5,False,Non-Critical,,,,,,,0,Non-Critical,0,OK,1.1.5.1.2,True,SUMMARY,False,False
58,Pre installation,1.1.5.1.2.1,53FS,SF43;FS59,2010-04-14 17:00:00,2010-04-14 17:00:00,0,0.0,0.0,0.0,0.0,0,6,False,Non-Critical,,,,,,,0,Non-Critical,0,OK,1.1.5.1.2.1,False,ZERO_DURATION_REVIEW,True,False
59,Installation tower,1.1.5.1.2.2,58FS;53FS,FS60;FS64;FS65,2010-04-15 08:00:00,2010-04-28 17:00:00,10d,660816.57421875,471977.375,188839.19921875,0.0,10,6,True,Tower,240.0,21.0,Critical,Long-lead. Transporte especial. Secuencia de montaje estricta.,2010-03-25 08:00:00,21.0,28,Critical Delay,100,CRITICAL,1.1.5.1.2.2,False,TERMINAL_ACTIVITY,True,True
60,stressing tower,1.1.5.1.2.3,59FS,FS61,2010-04-29 08:00:00,2010-04-30 17:00:00,2d,132163.30859375,94395.46875,37767.8398437501,0.0,2,6,True,Tower,240.0,21.0,Critical,Long-lead. Transporte especial. Secuencia de montaje estricta.,2010-04-08 08:00:00,21.0,18,Delayed,78,WARNING,1.1.5.1.2.3,False,TERMINAL_ACTIVITY,True,True
61,injection of tower,1.1.5.1.2.4,60FS,FS62,2010-05-03 08:00:00,2010-05-04 17:00:00,2d,132163.30859375,94395.46875,37767.8398437501,0.0,2,6,True,Tower,240.0,21.0,Critical,Long-lead. Transporte especial. Secuencia de montaje estricta.,2010-04-12 08:00:00,21.0,21,Delayed,81,WARNING,1.1.5.1.2.4,False,TERMINAL_ACTIVITY,True,True
62,Finish,1.1.5.1.2.5,61FS,FS95,2010-05-05 08:00:00,2010-05-06 17:00:00,2d,132163.30859375,94395.46875,37767.8398437501,0.0,2,6,False,Non-Critical,,,,,,,0,Non-Critical,0,OK,1.1.5.1.2.5,False,TERMINAL_ACTIVITY,True,True
63,WEC 3,1.1.5.1.3,,,2010-04-28 17:00:00,2010-05-20 17:00:00,16d,1057306.5,755163.78125,,,16,5,False,Non-Critical,,,,,,,0,Non-Critical,0,OK,1.1.5.1.3,True,SUMMARY,False,False
64,Pre installation,1.1.5.1.3.1,59FS,SF44;FS65,2010-04-28 17:00:00,2010-04-28 17:00:00,0,0.0,0.0,0.0,0.0,0,6,False,Non-Critical,,,,,,,0,Non-Critical,0,OK,1.1.5.1.3.1,False,ZERO_DURATION_REVIEW,True,False
65,Installation tower,1.1.5.1.3.2,64FS;59FS,FS66;FS70;FS71,2010-04-29 08:00:00,2010-05-12 17:00:00,10d,660816.57421875,471977.375,188839.19921875,0.0,10,6,True,Tower,240.0,21.0,Critical,Long-lead. Transporte especial. Secuencia de montaje estricta.,2010-04-08 08:00:00,21.0,11,Delayed,71,WARNING,1.1.5.1.3.2,False,TERMINAL_ACTIVITY,True,True
66,stressing tower,1.1.5.1.3.3,65FS,FS67,2010-05-13 08:00:00,2010-05-14 17:00:00,2d,132163.30859375,94395.46875,37767.8398437501,0.0,2,6,True,Tower,240.0,21.0,Critical,Long-lead. Transporte especial. Secuencia de montaje estricta.,2010-04-22 08:00:00,21.0,18,Delayed,78,WARNING,1.1.5.1.3.3,False,TERMINAL_ACTIVITY,True,True
67,injection of tower,1.1.5.1.3.4,66FS,FS68,2010-05-17 08:00:00,2010-05-18 17:00:00,2d,132163.30859375,94395.46875,37767.8398437501,0.0,2,6,True,Tower,240.0,21.0,Critical,Long-lead. Transporte especial. Secuencia de montaje estricta.,2010-04-26 08:00:00,21.0,22,Critical Delay,100,CRITICAL,1.1.5.1.3.4,False,TERMINAL_ACTIVITY,True,True
68,Finish,1.1.5.1.3.5,67FS,FS96,2010-05-19 08:00:00,2010-05-20 17:00:00,2d,132163.30859375,94395.46875,37767.8398437501,0.0,2,6,False,Non-Critical,,,,,,,0,Non-Critical,0,OK,1.1.5.1.3.5,False,TERMINAL_ACTIVITY,True,True
69,WEC 4,1.1.5.1.4,,,2010-05-12 17:00:00,2010-06-03 17:00:00,16d,1057306.5,755163.78125,,,16,5,False,Non-Critical,,,,,,,0,Non-Critical,0,OK,1.1.5.1.4,True,SUMMARY,False,False
70,Pre installation,1.1.5.1.4.1,65FS,SF45;FS71,2010-05-12 17:00:00,2010-05-12 17:00:00,0,0.0,0.0,0.0,0.0,0,6,False,Non-Critical,,,,,,,0,Non-Critical,0,OK,1.1.5.1.4.1,False,ZERO_DURATION_REVIEW,True,False
71,Installation tower,1.1.5.1.4.2,70FS;65FS,FS72,2010-05-13 08:00:00,2010-05-26 17:00:00,10d,660816.57421875,471977.375,188839.19921875,0.0,10,6,True,Tower,240.0,21.0,Critical,Long-lead. Transporte especial. Secuencia de montaje estricta.,2010-04-22 08:00:00,21.0,14,Delayed,74,WARNING,1.1.5.1.4.2,False,TERMINAL_ACTIVITY,True,True
72,stressing tower,1.1.5.1.4.3,71FS,FS73,2010-05-27 08:00:00,2010-05-28 17:00:00,2d,132163.30859375,94395.46875,37767.8398437501,0.0,2,6,True,Tower,240.0,21.0,Critical,Long-lead. Transporte especial. Secuencia de montaje estricta.,2010-05-06 08:00:00,21.0,23,Critical Delay,100,CRITICAL,1.1.5.1.4.3,False,TERMINAL_ACTIVITY,True,True
73,injection of tower,1.1.5.1.4.4,72FS,FS74,2010-05-31 08:00:00,2010-06-01 17:00:00,2d,132163.30859375,94395.46875,37767.8398437501,0.0,2,6,True,Tower,240.0,21.0,Critical,Long-lead. Transporte especial. Secuencia de montaje estricta.,2010-05-10 08:00:00,21.0,17,Delayed,77,WARNING,1.1.5.1.4.4,False,TERMINAL_ACTIVITY,True,True
74,Finish,1.1.5.1.4.5,73FS,FS76;FS97,2010-06-02 08:00:00,2010-06-03 17:00:00,2d,132163.30859375,94395.46875,37767.8398437501,0.0,2,6,False,Non-Critical,,,,,,,0,Non-Critical,0,OK,1.1.5.1.4.5,False,TERMINAL_ACTIVITY,True,True
75,WEC 5,1.1.5.1.5,,,2010-07-12 17:00:00,2010-08-03 17:00:00,16d,1057306.5,755163.78125,,,16,5,False,Non-Critical,,,,,,,0,Non-Critical,0,OK,1.1.5.1.5,True,SUMMARY,False,False
76,Pre installation,1.1.5.1.5.1,74FS,SF46;FS77,2010-07-12 17:00:00,2010-07-12 17:00:00,0,0.0,0.0,0.0,0.0,0,6,False,Non-Critical,,,,,,,0,Non-Critical,0,OK,1.1.5.1.5.1,False,ZERO_DURATION_REVIEW,True,False
77,Installation tower,1.1.5.1.5.2,76FS,FS78,2010-07-13 08:00:00,2010-07-26 17:00:00,10d,660816.57421875,471977.375,188839.19921875,0.0,10,6,True,Tower,240.0,21.0,Critical,Long-lead. Transporte especial. Secuencia de montaje estricta.,2010-06-22 08:00:00,21.0,22,Critical Delay,100,CRITICAL,1.1.5.1.5.2,False,TERMINAL_ACTIVITY,True,True
78,stressing tower,1.1.5.1.5.3,77FS,FS79,2010-07-27 08:00:00,2010-07-28 17:00:00,2d,132163.30859375,94395.46875,37767.8398437501,0.0,2,6,True,Tower,240.0,21.0,Critical,Long-lead. Transporte especial. Secuencia de montaje estricta.,2010-07-06 08:00:00,21.0,20,Delayed,80,WARNING,1.1.5.1.5.3,False,TERMINAL_ACTIVITY,True,True
79,injection of tower,1.1.5.1.5.4,78FS,FS80,2010-07-29 08:00:00,2010-07-30 17:00:00,2d,132163.30859375,94395.46875,37767.8398437501,0.0,2,6,True,Tower,240.0,21.0,Critical,Long-lead. Transporte especial. Secuencia de montaje estricta.,2010-07-08 08:00:00,21.0,35,Critical Delay,100,CRITICAL,1.1.5.1.5.4,False,TERMINAL_ACTIVITY,True,True
80,Finish,1.1.5.1.5.5,79FS,FS82;FS83;FS98,2010-08-02 08:00:00,2010-08-03 17:00:00,2d,132163.30859375,94395.46875,37767.8398437501,0.0,2,6,False,Non-Critical,,,,,,,0,Non-Critical,0,OK,1.1.5.1.5.5,False,TERMINAL_ACTIVITY,True,True
81,WEC 6,1.1.5.1.6,,,2010-08-03 17:00:00,2010-08-25 17:00:00,16d,1057306.5,755163.78125,,,16,5,False,Non-Critical,,,,,,,0,Non-Critical,0,OK,1.1.5.1.6,True,SUMMARY,False,False
82,Pre installation,1.1.5.1.6.1,80FS,SF47,2010-08-03 17:00:00,2010-08-03 17:00:00,0,0.0,0.0,0.0,0.0,0,6,False,Non-Critical,,,,,,,0,Non-Critical,0,OK,1.1.5.1.6.1,False,ZERO_DURATION_REVIEW,True,False
83,Installation tower,1.1.5.1.6.2,80FS,FS84,2010-08-04 08:00:00,2010-08-17 17:00:00,10d,660816.57421875,471977.375,188839.19921875,0.0,10,6,True,Tower,240.0,21.0,Critical,Long-lead. Transporte especial. Secuencia de montaje estricta.,2010-07-14 08:00:00,21.0,25,Critical Delay,100,CRITICAL,1.1.5.1.6.2,False,TERMINAL_ACTIVITY,True,True
84,stressing tower,1.1.5.1.6.3,83FS,FS85,2010-08-18 08:00:00,2010-08-19 17:00:00,2d,132163.30859375,94395.46875,37767.8398437501,0.0,2,6,True,Tower,240.0,21.0,Critical,Long-lead. Transporte especial. Secuencia de montaje estricta.,2010-07-28 08:00:00,21.0,19,Delayed,79,WARNING,1.1.5.1.6.3,False,TERMINAL_ACTIVITY,True,True
85,injection of tower,1.1.5.1.6.4,84FS,FS86,2010-08-20 08:00:00,2010-08-23 17:00:00,2d,132163.30859375,94395.46875,37767.8398437501,0.0,2,6,True,Tower,240.0,21.0,Critical,Long-lead. Transporte especial. Secuencia de montaje estricta.,2010-07-30 08:00:00,21.0,30,Critical Delay,100,CRITICAL,1.1.5.1.6.4,False,TERMINAL_ACTIVITY,True,True
86,Finish,1.1.5.1.6.5,85FS,FS88;FS89;FS99,2010-08-24 08:00:00,2010-08-25 17:00:00,2d,132163.30859375,94395.46875,37767.8398437501,0.0,2,6,False,Non-Critical,,,,,,,0,Non-Critical,0,OK,1.1.5.1.6.5,False,TERMINAL_ACTIVITY,True,True
87,WEC 7,1.1.5.1.7,,,2010-08-25 17:00:00,2010-09-16 17:00:00,16d,1057306.5,755163.78125,,,16,5,False,Non-Critical,,,,,,,0,Non-Critical,0,OK,1.1.5.1.7,True,SUMMARY,False,False
88,Pre installation,1.1.5.1.7.1,86FS,SF48;FS89,2010-08-25 17:00:00,2010-08-25 17:00:00,0,0.0,0.0,0.0,0.0,0,6,False,Non-Critical,,,,,,,0,Non-Critical,0,OK,1.1.5.1.7.1,False,ZERO_DURATION_REVIEW,True,False
89,Installation tower,1.1.5.1.7.2,86FS;88FS,FS90,2010-08-26 08:00:00,2010-09-08 17:00:00,10d,660816.57421875,471977.375,188839.19921875,0.0,10,6,True,Tower,240.0,21.0,Critical,Long-lead. Transporte especial. Secuencia de montaje estricta.,2010-08-05 08:00:00,21.0,18,Delayed,78,WARNING,1.1.5.1.7.2,False,TERMINAL_ACTIVITY,True,True
90,stressing tower,1.1.5.1.7.3,89FS,FS91,2010-09-09 08:00:00,2010-09-10 17:00:00,2d,132163.30859375,94395.46875,37767.8398437501,0.0,2,6,True,Tower,240.0,21.0,Critical,Long-lead. Transporte especial. Secuencia de montaje estricta.,2010-08-19 08:00:00,21.0,28,Critical Delay,100,CRITICAL,1.1.5.1.7.3,False,TERMINAL_ACTIVITY,True,True
91,injection of tower,1.1.5.1.7.4,90FS,FS92,2010-09-13 08:00:00,2010-09-14 17:00:00,2d,132163.30859375,94395.46875,37767.8398437501,0.0,2,6,True,Tower,240.0,21.0,Critical,Long-lead. Transporte especial. Secuencia de montaje estricta.,2010-08-23 08:00:00,21.0,15,Delayed,75,WARNING,1.1.5.1.7.4,False,TERMINAL_ACTIVITY,True,True
92,Finish,1.1.5.1.7.5,91FS,FS100,2010-09-15 08:00:00,2010-09-16 17:00:00,2d,132163.30859375,94395.46875,37767.8398437501,0.0,2,6,False,Non-Critical,,,,,,,0,Non-Critical,0,OK,1.1.5.1.7.5,False,TERMINAL_ACTIVITY,True,True
93,Erection machines,1.1.5.2,,,2010-08-06 08:00:00,2010-09-23 17:00:00,35d,8828045.32421875,7136044.5625,,,35,4,True,Nacelle,300.0,28.0,Critical,Incluye Nacelle + Hub + Blades (paquete 'Erection machines'). Componente más crítico.,2010-07-09 08:00:00,28.0,17,Delayed,77,WARNING,1.1.5.2,True,SUMMARY,False,False
94,WEC 1,1.1.5.2.1,95SF;56FS,FS102,2010-08-06 08:00:00,2010-08-12 17:00:00,5d,1261149.33203125,1019434.9375,241714.39453125,0.0,5,5,False,Non-Critical,,,,,,,0,Non-Critical,0,OK,1.1.5.2.1,False,TERMINAL_ACTIVITY,True,True
95,WEC 2,1.1.5.2.2,96SF;62FS,SF94;FS103,2010-08-13 08:00:00,2010-08-19 17:00:00,5d,1261149.33203125,1019434.9375,241714.39453125,0.0,5,5,False,Non-Critical,,,,,,,0,Non-Critical,0,OK,1.1.5.2.2,False,TERMINAL_ACTIVITY,True,True
96,WEC 3,1.1.5.2.3,97SF;68FS,SF95;FS104,2010-08-20 08:00:00,2010-08-26 17:00:00,5d,1261149.33203125,1019434.9375,241714.39453125,0.0,5,5,False,Non-Critical,,,,,,,0,Non-Critical,0,OK,1.1.5.2.3,False,TERMINAL_ACTIVITY,True,True
97,WEC 4,1.1.5.2.4,98SF;74FS,SF96;FS105,2010-08-27 08:00:00,2010-09-02 17:00:00,5d,1261149.33203125,1019434.9375,241714.39453125,0.0,5,5,False,Non-Critical,,,,,,,0,Non-Critical,0,OK,1.1.5.2.4,False,TERMINAL_ACTIVITY,True,True
98,WEC 5,1.1.5.2.5,99SF;80FS,SF97;FS106,2010-09-03 08:00:00,2010-09-09 17:00:00,5d,1261149.33203125,1019434.9375,241714.39453125,0.0,5,5,False,Non-Critical,,,,,,,0,Non-Critical,0,OK,1.1.5.2.5,False,TERMINAL_ACTIVITY,True,True
99,WEC 6,1.1.5.2.6,100SF;86FS,SF98;FS107,2010-09-10 08:00:00,2010-09-16 17:00:00,5d,1261149.33203125,1019434.9375,241714.39453125,0.0,5,5,False,Non-Critical,,,,,,,0,Non-Critical,0,OK,1.1.5.2.6,False,TERMINAL_ACTIVITY,True,True
100,WEC 7,1.1.5.2.7,92FS,SF99;FS108,2010-09-17 08:00:00,2010-09-23 17:00:00,5d,1261149.33203125,1019434.9375,241714.39453125,0.0,5,5,False,Non-Critical,,,,,,,0,Non-Critical,0,OK,1.1.5.2.7,False,TERMINAL_ACTIVITY,True,True
101,Grid,1.1.5.3,,,2010-08-13 08:00:00,2010-09-28 17:00:00,33d,174401.014648438,80401.6513671875,,,33,4,False,Non-Critical,,,,,,,0,Non-Critical,0,OK,1.1.5.3,True,SUMMARY,False,False
102,WEC 1,1.1.5.3.1,94FS,FS110,2010-08-13 08:00:00,2010-08-17 17:00:00,3d,24914.4306640625,11485.9501953125,13428.48046875,0.0,3,5,False,Non-Critical,,,,,,,0,Non-Critical,0,OK,1.1.5.3.1,False,TERMINAL_ACTIVITY,True,True
103,WEC 2,1.1.5.3.2,95FS,FS111,2010-08-20 08:00:00,2010-08-24 17:00:00,3d,24914.4306640625,11485.9501953125,13428.48046875,0.0,3,5,False,Non-Critical,,,,,,,0,Non-Critical,0,OK,1.1.5.3.2,False,TERMINAL_ACTIVITY,True,True
104,WEC 3,1.1.5.3.3,96FS,FS112,2010-08-27 08:00:00,2010-08-31 17:00:00,3d,24914.4306640625,11485.9501953125,13428.48046875,0.0,3,5,False,Non-Critical,,,,,,,0,Non-Critical,0,OK,1.1.5.3.3,False,TERMINAL_ACTIVITY,True,True
105,WEC 4,1.1.5.3.4,97FS,FS113,2010-09-03 08:00:00,2010-09-07 17:00:00,3d,24914.4306640625,11485.9501953125,13428.48046875,0.0,3,5,False,Non-Critical,,,,,,,0,Non-Critical,0,OK,1.1.5.3.4,False,TERMINAL_ACTIVITY,True,True
106,WEC 5,1.1.5.3.5,98FS,FS114,2010-09-10 08:00:00,2010-09-14 17:00:00,3d,24914.4306640625,11485.9501953125,13428.48046875,0.0,3,5,False,Non-Critical,,,,,,,0,Non-Critical,0,OK,1.1.5.3.5,False,TERMINAL_ACTIVITY,True,True
107,WEC 6,1.1.5.3.6,99FS,FS115,2010-09-17 08:00:00,2010-09-21 17:00:00,3d,24914.4306640625,11485.9501953125,13428.48046875,0.0,3,5,False,Non-Critical,,,,,,,0,Non-Critical,0,OK,1.1.5.3.6,False,TERMINAL_ACTIVITY,True,True
108,WEC 7,1.1.5.3.7,100FS,FS116,2010-09-24 08:00:00,2010-09-28 17:00:00,3d,24914.4306640625,11485.9501953125,13428.48046875,0.0,3,5,False,Non-Critical,,,,,,,0,Non-Critical,0,OK,1.1.5.3.7,False,TERMINAL_ACTIVITY,True,True
109,Energizing,1.1.5.4,,,2010-08-17 17:00:00,2010-09-28 17:00:00,30d,0.0,0.0,,,30,4,False,Non-Critical,,,,,,,0,Non-Critical,0,OK,1.1.5.4,True,SUMMARY,False,False
110,WEC 1,1.1.5.4.1,102FS;158FS,FS118,2010-08-17 17:00:00,2010-08-17 17:00:00,0,0.0,0.0,0.0,0.0,0,5,False,Non-Critical,,,,,,,0,Non-Critical,0,OK,1.1.5.4.1,False,ZERO_DURATION_REVIEW,True,False
111,WEC 2,1.1.5.4.2,103FS;158FS,FS119,2010-08-24 17:00:00,2010-08-24 17:00:00,0,0.0,0.0,0.0,0.0,0,5,False,Non-Critical,,,,,,,0,Non-Critical,0,OK,1.1.5.4.2,False,ZERO_DURATION_REVIEW,True,False
112,WEC 3,1.1.5.4.3,104FS;158FS,FS120,2010-08-31 17:00:00,2010-08-31 17:00:00,0,0.0,0.0,0.0,0.0,0,5,False,Non-Critical,,,,,,,0,Non-Critical,0,OK,1.1.5.4.3,False,ZERO_DURATION_REVIEW,True,False
113,WEC 4,1.1.5.4.4,105FS;158FS,FS121,2010-09-07 17:00:00,2010-09-07 17:00:00,0,0.0,0.0,0.0,0.0,0,5,False,Non-Critical,,,,,,,0,Non-Critical,0,OK,1.1.5.4.4,False,ZERO_DURATION_REVIEW,True,False
114,WEC 5,1.1.5.4.5,106FS;158FS,FS122,2010-09-14 17:00:00,2010-09-14 17:00:00,0,0.0,0.0,0.0,0.0,0,5,False,Non-Critical,,,,,,,0,Non-Critical,0,OK,1.1.5.4.5,False,ZERO_DURATION_REVIEW,True,False
115,WEC 6,1.1.5.4.6,107FS;158FS,FS123,2010-09-21 17:00:00,2010-09-21 17:00:00,0,0.0,0.0,0.0,0.0,0,5,False,Non-Critical,,,,,,,0,Non-Critical,0,OK,1.1.5.4.6,False,ZERO_DURATION_REVIEW,True,False
116,WEC 7,1.1.5.4.7,108FS;158FS,FS124,2010-09-28 17:00:00,2010-09-28 17:00:00,0,0.0,0.0,0.0,0.0,0,5,False,Non-Critical,,,,,,,0,Non-Critical,0,OK,1.1.5.4.7,False,ZERO_DURATION_REVIEW,True,False
117,Commissioning,1.1.5.5,,,2010-08-18 08:00:00,2010-10-01 17:00:00,33d,167933.846069336,11267.1297607422,,,33,4,False,Non-Critical,,,,,,,0,Non-Critical,0,OK,1.1.5.5,True,SUMMARY,False,False
118,WEC 1,1.1.5.5.1,110FS,FS126,2010-08-18 08:00:00,2010-08-20 17:00:00,3d,23990.5494384766,1609.58996582031,22380.9594726563,0.0,3,5,False,Non-Critical,,,,,,,0,Non-Critical,0,OK,1.1.5.5.1,False,TERMINAL_ACTIVITY,True,True
119,WEC 2,1.1.5.5.2,111FS,FS127,2010-08-25 08:00:00,2010-08-27 17:00:00,3d,23990.5494384766,1609.58996582031,22380.9594726563,0.0,3,5,False,Non-Critical,,,,,,,0,Non-Critical,0,OK,1.1.5.5.2,False,TERMINAL_ACTIVITY,True,True
120,WEC 3,1.1.5.5.3,112FS,FS128,2010-09-01 08:00:00,2010-09-03 17:00:00,3d,23990.5494384766,1609.58996582031,22380.9594726563,0.0,3,5,False,Non-Critical,,,,,,,0,Non-Critical,0,OK,1.1.5.5.3,False,TERMINAL_ACTIVITY,True,True
121,WEC 4,1.1.5.5.4,113FS,FS129,2010-09-08 08:00:00,2010-09-10 17:00:00,3d,23990.5494384766,1609.58996582031,22380.9594726563,0.0,3,5,False,Non-Critical,,,,,,,0,Non-Critical,0,OK,1.1.5.5.4,False,TERMINAL_ACTIVITY,True,True
122,WEC 5,1.1.5.5.5,114FS,FS130,2010-09-15 08:00:00,2010-09-17 17:00:00,3d,23990.5494384766,1609.58996582031,22380.9594726563,0.0,3,5,False,Non-Critical,,,,,,,0,Non-Critical,0,OK,1.1.5.5.5,False,TERMINAL_ACTIVITY,True,True
123,WEC 6,1.1.5.5.6,115FS,FS131,2010-09-22 08:00:00,2010-09-24 17:00:00,3d,23990.5494384766,1609.58996582031,22380.9594726563,0.0,3,5,False,Non-Critical,,,,,,,0,Non-Critical,0,OK,1.1.5.5.6,False,TERMINAL_ACTIVITY,True,True
124,WEC 7,1.1.5.5.7,116FS,FS132,2010-09-29 08:00:00,2010-10-01 17:00:00,3d,23990.5494384766,1609.58996582031,22380.9594726563,0.0,3,5,False,Non-Critical,,,,,,,0,Non-Critical,0,OK,1.1.5.5.7,False,TERMINAL_ACTIVITY,True,True
125,Trail period 300h,1.1.5.6,,,2010-08-23 08:00:00,2010-10-20 17:00:00,43d,48824.2309570312,48824.2309570312,,,43,4,False,Non-Critical,,,,,,,0,Non-Critical,0,OK,1.1.5.6,True,SUMMARY,False,False
126,WEC 1,1.1.5.6.1,118FS,FS134,2010-08-23 08:00:00,2010-09-08 17:00:00,13d,6974.89013671875,6974.89013671875,0.0,0.0,13,5,False,Non-Critical,,,,,,,0,Non-Critical,0,OK,1.1.5.6.1,False,TERMINAL_ACTIVITY,True,True
127,WEC 2,1.1.5.6.2,119FS,FS135,2010-08-30 08:00:00,2010-09-15 17:00:00,13d,6974.89013671875,6974.89013671875,0.0,0.0,13,5,False,Non-Critical,,,,,,,0,Non-Critical,0,OK,1.1.5.6.2,False,TERMINAL_ACTIVITY,True,True
128,WEC 3,1.1.5.6.3,120FS,FS136,2010-09-06 08:00:00,2010-09-22 17:00:00,13d,6974.89013671875,6974.89013671875,0.0,0.0,13,5,False,Non-Critical,,,,,,,0,Non-Critical,0,OK,1.1.5.6.3,False,TERMINAL_ACTIVITY,True,True
129,WEC 4,1.1.5.6.4,121FS,FS137,2010-09-13 08:00:00,2010-09-29 17:00:00,13d,6974.89013671875,6974.89013671875,0.0,0.0,13,5,False,Non-Critical,,,,,,,0,Non-Critical,0,OK,1.1.5.6.4,False,TERMINAL_ACTIVITY,True,True
130,WEC 5,1.1.5.6.5,122FS,FS138,2010-09-20 08:00:00,2010-10-06 17:00:00,13d,6974.89013671875,6974.89013671875,0.0,0.0,13,5,False,Non-Critical,,,,,,,0,Non-Critical,0,OK,1.1.5.6.5,False,TERMINAL_ACTIVITY,True,True
131,WEC 6,1.1.5.6.6,123FS,FS139,2010-09-27 08:00:00,2010-10-13 17:00:00,13d,6974.89013671875,6974.89013671875,0.0,0.0,13,5,False,Non-Critical,,,,,,,0,Non-Critical,0,OK,1.1.5.6.6,False,TERMINAL_ACTIVITY,True,True
132,WEC 7,1.1.5.6.7,124FS,FS140,2010-10-04 08:00:00,2010-10-20 17:00:00,13d,6974.89013671875,6974.89013671875,0.0,0.0,13,5,False,Non-Critical,,,,,,,0,Non-Critical,0,OK,1.1.5.6.7,False,TERMINAL_ACTIVITY,True,True
133,300h Maintenace service,1.1.5.7,,,2010-09-09 08:00:00,2010-10-22 17:00:00,32d,164178.146972656,7511.42041015625,,,32,4,False,Non-Critical,,,,,,,0,Non-Critical,0,OK,1.1.5.7,True,SUMMARY,False,False
134,WEC 1,1.1.5.7.1,126FS,FS142,2010-09-09 08:00:00,2010-09-10 17:00:00,2d,23454.0209960938,1073.06005859375,22380.9609375,0.0,2,5,False,Non-Critical,,,,,,,0,Non-Critical,0,OK,1.1.5.7.1,False,TERMINAL_ACTIVITY,True,True
135,WEC 2,1.1.5.7.2,127FS,FS143,2010-09-16 08:00:00,2010-09-17 17:00:00,2d,23454.0209960938,1073.06005859375,22380.9609375,0.0,2,5,False,Non-Critical,,,,,,,0,Non-Critical,0,OK,1.1.5.7.2,False,TERMINAL_ACTIVITY,True,True
136,WEC 3,1.1.5.7.3,128FS,FS144,2010-09-23 08:00:00,2010-09-24 17:00:00,2d,23454.0209960938,1073.06005859375,22380.9609375,0.0,2,5,False,Non-Critical,,,,,,,0,Non-Critical,0,OK,1.1.5.7.3,False,TERMINAL_ACTIVITY,True,True
137,WEC 4,1.1.5.7.4,129FS,FS145,2010-09-30 08:00:00,2010-10-01 17:00:00,2d,23454.0209960938,1073.06005859375,22380.9609375,0.0,2,5,False,Non-Critical,,,,,,,0,Non-Critical,0,OK,1.1.5.7.4,False,TERMINAL_ACTIVITY,True,True
138,WEC 5,1.1.5.7.5,130FS,FS146,2010-10-07 08:00:00,2010-10-08 17:00:00,2d,23454.0209960938,1073.06005859375,22380.9609375,0.0,2,5,False,Non-Critical,,,,,,,0,Non-Critical,0,OK,1.1.5.7.5,False,TERMINAL_ACTIVITY,True,True
139,WEC 6,1.1.5.7.6,131FS,FS147,2010-10-14 08:00:00,2010-10-15 17:00:00,2d,23454.0209960938,1073.06005859375,22380.9609375,0.0,2,5,False,Non-Critical,,,,,,,0,Non-Critical,0,OK,1.1.5.7.6,False,TERMINAL_ACTIVITY,True,True
140,WEC 7,1.1.5.7.7,132FS,FS148,2010-10-21 08:00:00,2010-10-22 17:00:00,2d,23454.0209960938,1073.06005859375,22380.9609375,0.0,2,5,False,Non-Critical,,,,,,,0,Non-Critical,0,OK,1.1.5.7.7,False,TERMINAL_ACTIVITY,True,True
141,Take over,1.1.5.8,,,2010-09-10 17:00:00,2010-10-22 17:00:00,30d,0.0,0.0,,,30,4,False,Non-Critical,,,,,,,0,Non-Critical,0,OK,1.1.5.8,True,SUMMARY,False,False
142,WEC 1,1.1.5.8.1,134FS,,2010-09-10 17:00:00,2010-09-10 17:00:00,0,0.0,0.0,0.0,0.0,0,5,False,Non-Critical,,,,,,,0,Non-Critical,0,OK,1.1.5.8.1,False,ZERO_DURATION_REVIEW,True,False
143,WEC 2,1.1.5.8.2,135FS,,2010-09-17 17:00:00,2010-09-17 17:00:00,0,0.0,0.0,0.0,0.0,0,5,False,Non-Critical,,,,,,,0,Non-Critical,0,OK,1.1.5.8.2,False,ZERO_DURATION_REVIEW,True,False
144,WEC 3,1.1.5.8.3,136FS,,2010-09-24 17:00:00,2010-09-24 17:00:00,0,0.0,0.0,0.0,0.0,0,5,False,Non-Critical,,,,,,,0,Non-Critical,0,OK,1.1.5.8.3,False,ZERO_DURATION_REVIEW,True,False
145,WEC 4,1.1.5.8.4,137FS,,2010-10-01 17:00:00,2010-10-01 17:00:00,0,0.0,0.0,0.0,0.0,0,5,False,Non-Critical,,,,,,,0,Non-Critical,0,OK,1.1.5.8.4,False,ZERO_DURATION_REVIEW,True,False
146,WEC 5,1.1.5.8.5,138FS,,2010-10-08 17:00:00,2010-10-08 17:00:00,0,0.0,0.0,0.0,0.0,0,5,False,Non-Critical,,,,,,,0,Non-Critical,0,OK,1.1.5.8.5,False,ZERO_DURATION_REVIEW,True,False
147,WEC 6,1.1.5.8.6,139FS,,2010-10-15 17:00:00,2010-10-15 17:00:00,0,0.0,0.0,0.0,0.0,0,5,False,Non-Critical,,,,,,,0,Non-Critical,0,OK,1.1.5.8.6,False,ZERO_DURATION_REVIEW,True,False
148,WEC 7,1.1.5.8.7,140FS,FS166,2010-10-22 17:00:00,2010-10-22 17:00:00,0,0.0,0.0,0.0,0.0,0,5,False,Non-Critical,,,,,,,0,Non-Critical,0,OK,1.1.5.8.7,False,ZERO_DURATION_REVIEW,True,False
149,Electrical works,1.1.6,,,2010-04-23 08:00:00,2010-06-04 17:00:00,31d,650046.796020508,276445.681762695,,,31,3,False,Non-Critical,,,,,,,0,Non-Critical,0,OK,1.1.6,True,SUMMARY,False,False
150,Electricity distributor,1.1.6.1,,,2010-04-23 08:00:00,2010-06-04 17:00:00,31d,650046.796020508,276445.681762695,,,31,4,False,Non-Critical,,,,,,,0,Non-Critical,0,OK,1.1.6.1,True,SUMMARY,False,False
151,Mobilisation to site,1.1.6.1.1,56FS,FS152;SF164,2010-04-23 08:00:00,2010-04-26 17:00:00,2d,49073.05859375,39473.05859375,9600.0,0.0,2,5,False,Non-Critical,,,,,,,0,Non-Critical,0,OK,1.1.6.1.1,False,TERMINAL_ACTIVITY,True,True
152,Excavation for cabin,1.1.6.1.2,151FS,FS153;FS154,2010-04-26 17:00:00,2010-04-26 17:00:00,0,0.0,0.0,0.0,0.0,0,5,False,Non-Critical,,,,,,,0,Non-Critical,0,OK,1.1.6.1.2,False,ZERO_DURATION_REVIEW,True,False
153,Building of the cabin,1.1.6.1.3,152FS,,2010-04-27 08:00:00,2010-04-27 17:00:00,1d,100536.53125,100536.53125,0.0,0.0,1,5,False,Non-Critical,,,,,,,0,Non-Critical,0,OK,1.1.6.1.3,False,TERMINAL_ACTIVITY,True,True
154,Excavation for cables,1.1.6.1.4,152FS,SS155,2010-04-27 08:00:00,2010-05-14 17:00:00,14d,115511.897460938,7511.419921875,108000.477539063,0.0,14,5,True,Cable,120.0,14.0,Medium-High,Incluye conexión eléctrica a turbinas.,2010-04-13 08:00:00,14.0,10,Delayed,70,WARNING,1.1.6.1.4,False,TERMINAL_ACTIVITY,True,True
155,Laying of cables to WEC 1,1.1.6.1.5,154SS,FS156,2010-04-27 08:00:00,2010-05-14 17:00:00,14d,223511.899414063,115511.421875,108000.477539063,0.0,14,5,True,Cable,120.0,14.0,Medium-High,Incluye conexión eléctrica a turbinas.,2010-04-13 08:00:00,14.0,13,Delayed,73,WARNING,1.1.6.1.5,False,TERMINAL_ACTIVITY,True,True
156,Sheet test,1.1.6.1.6,155FS,FS157,2010-05-17 08:00:00,2010-05-21 17:00:00,5d,48047.9501953125,8047.9501953125,40000.0,0.0,5,5,False,Non-Critical,,,,,,,0,Non-Critical,0,OK,1.1.6.1.6,False,TERMINAL_ACTIVITY,True,True
157,Electrical connection to Turbines,1.1.6.1.7,156FS,FS158,2010-05-24 08:00:00,2010-05-26 17:00:00,3d,73609.5899658203,1609.58996582031,72000.0,0.0,3,5,True,Cable,120.0,14.0,Medium-High,Incluye conexión eléctrica a turbinas.,2010-05-10 08:00:00,14.0,10,Delayed,70,WARNING,1.1.6.1.7,False,TERMINAL_ACTIVITY,True,True
158,Test of cables,1.1.6.1.8,157FS,FS110;FS111;FS112;FS113;FS114;FS115;FS116;FS159,2010-05-27 08:00:00,2010-06-04 17:00:00,7d,39755.869140625,3755.7099609375,36000.1591796875,0.0,7,5,True,Cable,120.0,14.0,Medium-High,Incluye conexión eléctrica a turbinas.,2010-05-13 08:00:00,14.0,9,Delayed,69,WARNING,1.1.6.1.8,False,TERMINAL_ACTIVITY,True,True
159,Energize,1.1.6.1.9,158FS,FS165,2010-06-04 17:00:00,2010-06-04 17:00:00,0,0.0,0.0,0.0,0.0,0,5,False,Non-Critical,,,,,,,0,Non-Critical,0,OK,1.1.6.1.9,False,ZERO_DURATION_REVIEW,True,False
160,Gridconnection,1.1.7,,,2010-01-28 17:00:00,2010-06-25 17:00:00,106d,862738.938476563,40239.7294921875,,,106,3,False,Non-Critical,,,,,,,0,Non-Critical,0,OK,1.1.7,True,SUMMARY,False,False
161,Electricity distributor,1.1.7.1,,,2010-01-28 17:00:00,2010-06-25 17:00:00,106d,862738.938476563,40239.7294921875,,,106,4,False,Non-Critical,,,,,,,0,Non-Critical,0,OK,1.1.7.1,True,SUMMARY,False,False
162,Order connection,1.1.7.1.1,163SF,,2010-01-28 17:00:00,2010-01-28 17:00:00,0,0.0,0.0,0.0,0.0,0,5,False,Non-Critical,,,,,,,0,Non-Critical,0,OK,1.1.7.1.1,False,ZERO_DURATION_REVIEW,True,False
163,Order material,1.1.7.1.2,164SF,SF162,2010-01-29 08:00:00,2010-03-25 17:00:00,40d,295627.595703125,21461.189453125,274166.40625,0.0,40,5,False,Non-Critical,,,,,,,0,Non-Critical,0,OK,1.1.7.1.2,False,TERMINAL_ACTIVITY,True,True
164,Lay cable,1.1.7.1.3,151SF,SF163,2010-03-26 08:00:00,2010-04-22 17:00:00,20d,284896.99609375,10730.58984375,274166.40625,0.0,20,5,True,Cable,120.0,14.0,Medium-High,Incluye conexión eléctrica a turbinas.,2010-03-12 08:00:00,14.0,6,At Risk,41,WARNING,1.1.7.1.3,False,TERMINAL_ACTIVITY,True,True
165,Ready to Energize,1.1.7.1.4,159FS,,2010-06-07 08:00:00,2010-06-25 17:00:00,15d,282214.346679688,8047.9501953125,274166.396484376,0.0,15,5,False,Non-Critical,,,,,,,0,Non-Critical,0,OK,1.1.7.1.4,False,TERMINAL_ACTIVITY,True,True
166,Finish,1.2,148FS,,2010-10-22 17:00:00,2010-10-22 17:00:00,0,0.0,0.0,0.0,0.0,0,2,False,Non-Critical,,,,,,,0,Non-Critical,0,OK,1.2,False,ZERO_DURATION_REVIEW,True,False
