ID,Name,WBS,WBS_Level,Duration_Plan_Days,Baseline_Start,Baseline_End,ES_Days,EF_Days,LS_Days,LF_Days,Total_Float_Days,Free_Float_Days,Is_Critical,CPM_Start_Date,CPM_Finish_Date,Baseline_Start_Variance_Days,Baseline_Finish_Variance_Days
3,Milieuvergunning,1.1.1.1,4,0.0,2009-02-12 17:00:00,2009-02-12 17:00:00,0.0,0.0,299.0,299.0,299.0,299.0,False,2008-10-20 08:00:00,2008-10-20 08:00:00,-115.375,-115.375
4,Bouwvergunning,1.1.1.2,4,0.0,2009-02-10 17:00:00,2009-02-10 17:00:00,0.0,0.0,299.0,299.0,299.0,299.0,False,2008-10-20 08:00:00,2008-10-20 08:00:00,-113.375,-113.375
5,RUP,1.1.1.3,4,0.0,2009-03-02 17:00:00,2009-03-02 17:00:00,0.0,0.0,91.0,91.0,91.0,0.0,False,2008-10-20 08:00:00,2008-10-20 08:00:00,-133.375,-133.375
52,Pre installation,1.1.5.1.1.1,6,0.0,2010-03-31 17:00:00,2010-03-31 17:00:00,0.0,0.0,179.0,179.0,179.0,0.0,False,2008-10-20 08:00:00,2008-10-20 08:00:00,-527.375,-527.375
162,Order connection,1.1.7.1.1,5,0.0,2010-01-28 17:00:00,2010-01-28 17:00:00,0.0,0.0,299.0,299.0,299.0,299.0,False,2008-10-20 08:00:00,2008-10-20 08:00:00,-465.375,-465.375
24,settlement on construction site,1.1.4.1,4,5.0,2010-01-28 08:00:00,2010-02-03 17:00:00,0.0,5.0,294.0,299.0,294.0,294.0,False,2008-10-20 08:00:00,2008-10-25 08:00:00,-465.0,-466.375
26,foundation 1,1.1.4.2.1,5,5.0,2010-02-04 08:00:00,2010-02-10 17:00:00,0.0,5.0,294.0,299.0,294.0,5.0,False,2008-10-20 08:00:00,2008-10-25 08:00:00,-472.0,-473.375
27,foundation 2,1.1.4.2.2,5,5.0,2010-02-18 08:00:00,2010-02-24 17:00:00,0.0,5.0,294.0,299.0,294.0,294.0,False,2008-10-20 08:00:00,2008-10-25 08:00:00,-486.0,-487.375
28,foundation 3,1.1.4.2.3,5,5.0,2010-03-04 08:00:00,2010-03-10 17:00:00,0.0,5.0,294.0,299.0,294.0,294.0,False,2008-10-20 08:00:00,2008-10-25 08:00:00,-500.0,-501.375
29,foundation 4,1.1.4.2.4,5,5.0,2010-03-18 08:00:00,2010-03-24 17:00:00,0.0,5.0,294.0,299.0,294.0,294.0,False,2008-10-20 08:00:00,2008-10-25 08:00:00,-514.0,-515.375
8,offerte,1.1.2.1.1,5,10.0,2009-02-05 08:00:00,2009-02-18 17:00:00,0.0,10.0,201.0,211.0,201.0,0.0,False,2008-10-20 08:00:00,2008-10-30 08:00:00,-108.0,-111.375
53,Installation tower,1.1.5.1.1.2,6,10.0,2010-04-01 08:00:00,2010-04-14 17:00:00,0.0,10.0,179.0,189.0,179.0,0.0,False,2008-10-20 08:00:00,2008-10-30 08:00:00,-528.0,-531.375
17,contracten,1.1.2.3.2,5,14.0,2009-03-03 08:00:00,2009-03-20 17:00:00,0.0,14.0,91.0,105.0,91.0,91.0,False,2008-10-20 08:00:00,2008-11-03 08:00:00,-134.0,-137.375
34,foundation 1,1.1.4.3.1,5,15.0,2010-02-11 08:00:00,2010-03-03 17:00:00,0.0,15.0,284.0,299.0,284.0,5.0,False,2008-10-20 08:00:00,2008-11-04 08:00:00,-479.0,-484.375
35,foundation 2,1.1.4.3.2,5,15.0,2010-02-25 08:00:00,2010-03-17 17:00:00,0.0,15.0,284.0,299.0,284.0,5.0,False,2008-10-20 08:00:00,2008-11-04 08:00:00,-493.0,-498.375
36,foundation 3,1.1.4.3.3,5,15.0,2010-03-11 08:00:00,2010-03-31 17:00:00,0.0,15.0,284.0,299.0,284.0,5.0,False,2008-10-20 08:00:00,2008-11-04 08:00:00,-507.0,-512.375
37,foundation 4,1.1.4.3.4,5,15.0,2010-03-25 08:00:00,2010-04-14 17:00:00,0.0,15.0,284.0,299.0,284.0,5.0,False,2008-10-20 08:00:00,2008-11-04 08:00:00,-521.0,-526.375
42,setting concrete 1,1.1.4.4.1,5,20.0,2010-03-04 08:00:00,2010-03-31 17:00:00,0.0,20.0,279.0,299.0,279.0,15.0,False,2008-10-20 08:00:00,2008-11-09 08:00:00,-500.0,-507.375
43,setting concrete 2,1.1.4.4.2,5,20.0,2010-03-18 08:00:00,2010-04-14 17:00:00,0.0,20.0,279.0,299.0,279.0,15.0,False,2008-10-20 08:00:00,2008-11-09 08:00:00,-514.0,-521.375
44,setting concrete 3,1.1.4.4.3,5,20.0,2010-04-01 08:00:00,2010-04-28 17:00:00,0.0,20.0,279.0,299.0,279.0,15.0,False,2008-10-20 08:00:00,2008-11-09 08:00:00,-528.0,-535.375
164,Lay cable,1.1.7.1.3,5,20.0,2010-03-26 08:00:00,2010-04-22 17:00:00,0.0,20.0,279.0,299.0,279.0,40.0,False,2008-10-20 08:00:00,2008-11-09 08:00:00,-522.0,-529.375
163,Order material,1.1.7.1.2,5,40.0,2010-01-29 08:00:00,2010-03-25 17:00:00,0.0,40.0,259.0,299.0,259.0,0.0,False,2008-10-20 08:00:00,2008-11-29 08:00:00,-466.0,-481.375
12,orientatiestudie,1.1.2.2.1,5,105.0,2008-10-20 08:00:00,2009-03-13 17:00:00,0.0,105.0,0.0,105.0,0.0,0.0,True,2008-10-20 08:00:00,2009-02-02 08:00:00,0.0,-39.375
21,Mark NMP pipe,1.1.3.2,4,5.0,2009-02-12 08:00:00,2009-02-18 17:00:00,5.0,10.0,294.0,299.0,289.0,289.0,False,2008-10-25 08:00:00,2008-10-30 08:00:00,-110.0,-111.375
30,foundation 5,1.1.4.2.5,5,5.0,2010-05-18 08:00:00,2010-05-24 17:00:00,6.0,11.0,294.0,299.0,288.0,288.0,False,2008-10-26 08:00:00,2008-10-31 08:00:00,-569.0,-570.375
58,Pre installation,1.1.5.1.2.1,6,0.0,2010-04-14 17:00:00,2010-04-14 17:00:00,10.0,10.0,189.0,189.0,179.0,0.0,False,2008-10-30 08:00:00,2008-10-30 08:00:00,-531.375,-531.375
54,stressing tower,1.1.5.1.1.3,6,2.0,2010-04-15 08:00:00,2010-04-16 17:00:00,10.0,12.0,244.0,246.0,234.0,0.0,False,2008-10-30 08:00:00,2008-11-01 08:00:00,-532.0,-531.375
59,Installation tower,1.1.5.1.2.2,6,10.0,2010-04-15 08:00:00,2010-04-28 17:00:00,10.0,20.0,189.0,199.0,179.0,0.0,False,2008-10-30 08:00:00,2008-11-09 08:00:00,-532.0,-535.375
9,sondering,1.1.2.1.2,5,14.0,2009-02-19 08:00:00,2009-03-10 17:00:00,10.0,24.0,211.0,225.0,201.0,0.0,False,2008-10-30 08:00:00,2008-11-13 08:00:00,-112.0,-117.375
45,setting concrete 4,1.1.4.4.4,5,20.0,2010-04-15 08:00:00,2010-05-12 17:00:00,10.0,30.0,279.0,299.0,269.0,5.0,False,2008-10-30 08:00:00,2008-11-19 08:00:00,-532.0,-539.375
38,foundation 5,1.1.4.3.5,5,15.0,2010-05-25 08:00:00,2010-06-14 17:00:00,11.0,26.0,284.0,299.0,273.0,0.0,False,2008-10-31 08:00:00,2008-11-15 08:00:00,-571.0,-576.375
55,injection of tower,1.1.5.1.1.4,6,2.0,2010-04-19 08:00:00,2010-04-20 17:00:00,12.0,14.0,246.0,248.0,234.0,0.0,False,2008-11-01 08:00:00,2008-11-03 08:00:00,-534.0,-533.375
56,Finish,1.1.5.1.1.5,6,2.0,2010-04-21 08:00:00,2010-04-22 17:00:00,14.0,16.0,248.0,250.0,234.0,0.0,False,2008-11-03 08:00:00,2008-11-05 08:00:00,-534.0,-533.375
151,Mobilisation to site,1.1.6.1.1,5,2.0,2010-04-23 08:00:00,2010-04-26 17:00:00,16.0,18.0,250.0,252.0,234.0,0.0,False,2008-11-05 08:00:00,2008-11-07 08:00:00,-534.0,-535.375
152,Excavation for cabin,1.1.6.1.2,5,0.0,2010-04-26 17:00:00,2010-04-26 17:00:00,18.0,18.0,252.0,252.0,234.0,0.0,False,2008-11-07 08:00:00,2008-11-07 08:00:00,-535.375,-535.375
153,Building of the cabin,1.1.6.1.3,5,1.0,2010-04-27 08:00:00,2010-04-27 17:00:00,18.0,19.0,298.0,299.0,280.0,280.0,False,2008-11-07 08:00:00,2008-11-08 08:00:00,-536.0,-535.375
154,Excavation for cables,1.1.6.1.4,5,14.0,2010-04-27 08:00:00,2010-05-14 17:00:00,18.0,32.0,252.0,266.0,234.0,0.0,False,2008-11-07 08:00:00,2008-11-21 08:00:00,-536.0,-539.375
155,Laying of cables to WEC 1,1.1.6.1.5,5,14.0,2010-04-27 08:00:00,2010-05-14 17:00:00,18.0,32.0,252.0,266.0,234.0,0.0,False,2008-11-07 08:00:00,2008-11-21 08:00:00,-536.0,-539.375
64,Pre installation,1.1.5.1.3.1,6,0.0,2010-04-28 17:00:00,2010-04-28 17:00:00,20.0,20.0,199.0,199.0,179.0,0.0,False,2008-11-09 08:00:00,2008-11-09 08:00:00,-535.375,-535.375
60,stressing tower,1.1.5.1.2.3,6,2.0,2010-04-29 08:00:00,2010-04-30 17:00:00,20.0,22.0,267.0,269.0,247.0,0.0,False,2008-11-09 08:00:00,2008-11-11 08:00:00,-536.0,-535.375
65,Installation tower,1.1.5.1.3.2,6,10.0,2010-04-29 08:00:00,2010-05-12 17:00:00,20.0,30.0,199.0,209.0,179.0,0.0,False,2008-11-09 08:00:00,2008-11-19 08:00:00,-536.0,-539.375
61,injection of tower,1.1.5.1.2.4,6,2.0,2010-05-03 08:00:00,2010-05-04 17:00:00,22.0,24.0,269.0,271.0,247.0,0.0,False,2008-11-11 08:00:00,2008-11-13 08:00:00,-538.0,-537.375
31,foundation 6,1.1.4.2.6,5,5.0,2010-06-09 08:00:00,2010-06-15 17:00:00,22.0,27.0,294.0,299.0,272.0,272.0,False,2008-11-11 08:00:00,2008-11-16 08:00:00,-575.0,-576.375
62,Finish,1.1.5.1.2.5,6,2.0,2010-05-05 08:00:00,2010-05-06 17:00:00,24.0,26.0,271.0,273.0,247.0,43.0,False,2008-11-13 08:00:00,2008-11-15 08:00:00,-538.0,-537.375
10,sonderingsverslag,1.1.2.1.3,5,14.0,2009-03-11 08:00:00,2009-03-30 17:00:00,24.0,38.0,225.0,239.0,201.0,157.0,False,2008-11-13 08:00:00,2008-11-27 08:00:00,-118.0,-123.375
46,setting concrete 5,1.1.4.4.5,5,20.0,2010-06-15 08:00:00,2010-07-12 17:00:00,26.0,46.0,279.0,299.0,253.0,0.0,False,2008-11-15 08:00:00,2008-12-05 08:00:00,-577.0,-584.375
39,foundation 6,1.1.4.3.6,5,15.0,2010-06-16 08:00:00,2010-07-06 17:00:00,27.0,42.0,284.0,299.0,257.0,0.0,False,2008-11-16 08:00:00,2008-12-01 08:00:00,-577.0,-582.375
70,Pre installation,1.1.5.1.4.1,6,0.0,2010-05-12 17:00:00,2010-05-12 17:00:00,30.0,30.0,209.0,209.0,179.0,0.0,False,2008-11-19 08:00:00,2008-11-19 08:00:00,-539.375,-539.375
66,stressing tower,1.1.5.1.3.3,6,2.0,2010-05-13 08:00:00,2010-05-14 17:00:00,30.0,32.0,267.0,269.0,237.0,0.0,False,2008-11-19 08:00:00,2008-11-21 08:00:00,-540.0,-539.375
71,Installation tower,1.1.5.1.4.2,6,10.0,2010-05-13 08:00:00,2010-05-26 17:00:00,30.0,40.0,209.0,219.0,179.0,0.0,False,2008-11-19 08:00:00,2008-11-29 08:00:00,-540.0,-543.375
67,injection of tower,1.1.5.1.3.4,6,2.0,2010-05-17 08:00:00,2010-05-18 17:00:00,32.0,34.0,269.0,271.0,237.0,0.0,False,2008-11-21 08:00:00,2008-11-23 08:00:00,-542.0,-541.375
156,Sheet test,1.1.6.1.6,5,5.0,2010-05-17 08:00:00,2010-05-21 17:00:00,32.0,37.0,266.0,271.0,234.0,0.0,False,2008-11-21 08:00:00,2008-11-26 08:00:00,-542.0,-541.375
68,Finish,1.1.5.1.3.5,6,2.0,2010-05-19 08:00:00,2010-05-20 17:00:00,34.0,36.0,271.0,273.0,237.0,38.0,False,2008-11-23 08:00:00,2008-11-25 08:00:00,-542.0,-541.375
157,Electrical connection to Turbines,1.1.6.1.7,5,3.0,2010-05-24 08:00:00,2010-05-26 17:00:00,37.0,40.0,271.0,274.0,234.0,0.0,False,2008-11-26 08:00:00,2008-11-29 08:00:00,-544.0,-543.375
32,foundation 7,1.1.4.2.7,5,5.0,2010-07-01 08:00:00,2010-07-07 17:00:00,38.0,43.0,294.0,299.0,256.0,256.0,False,2008-11-27 08:00:00,2008-12-02 08:00:00,-581.0,-582.375
72,stressing tower,1.1.5.1.4.3,6,2.0,2010-05-27 08:00:00,2010-05-28 17:00:00,40.0,42.0,219.0,221.0,179.0,0.0,False,2008-11-29 08:00:00,2008-12-01 08:00:00,-544.0,-543.375
158,Test of cables,1.1.6.1.8,5,7.0,2010-05-27 08:00:00,2010-06-04 17:00:00,40.0,47.0,274.0,281.0,234.0,0.0,False,2008-11-29 08:00:00,2008-12-06 08:00:00,-544.0,-545.375
73,injection of tower,1.1.5.1.4.4,6,2.0,2010-05-31 08:00:00,2010-06-01 17:00:00,42.0,44.0,221.0,223.0,179.0,0.0,False,2008-12-01 08:00:00,2008-12-03 08:00:00,-546.0,-545.375
47,setting concrete 6,1.1.4.4.6,5,20.0,2010-07-07 08:00:00,2010-08-03 17:00:00,42.0,62.0,279.0,299.0,237.0,0.0,False,2008-12-01 08:00:00,2008-12-21 08:00:00,-583.0,-590.375
40,foundation 7,1.1.4.3.7,5,15.0,2010-07-08 08:00:00,2010-07-28 17:00:00,43.0,58.0,284.0,299.0,241.0,0.0,False,2008-12-02 08:00:00,2008-12-17 08:00:00,-583.0,-588.375
74,Finish,1.1.5.1.4.5,6,2.0,2010-06-02 08:00:00,2010-06-03 17:00:00,44.0,46.0,223.0,225.0,179.0,0.0,False,2008-12-03 08:00:00,2008-12-05 08:00:00,-546.0,-545.375
76,Pre installation,1.1.5.1.5.1,6,0.0,2010-07-12 17:00:00,2010-07-12 17:00:00,46.0,46.0,225.0,225.0,179.0,0.0,False,2008-12-05 08:00:00,2008-12-05 08:00:00,-584.375,-584.375
77,Installation tower,1.1.5.1.5.2,6,10.0,2010-07-13 08:00:00,2010-07-26 17:00:00,46.0,56.0,225.0,235.0,179.0,0.0,False,2008-12-05 08:00:00,2008-12-15 08:00:00,-585.0,-588.375
159,Energize,1.1.6.1.9,5,0.0,2010-06-04 17:00:00,2010-06-04 17:00:00,47.0,47.0,284.0,284.0,237.0,0.0,False,2008-12-06 08:00:00,2008-12-06 08:00:00,-545.375,-545.375
165,Ready to Energize,1.1.7.1.4,5,15.0,2010-06-07 08:00:00,2010-06-25 17:00:00,47.0,62.0,284.0,299.0,237.0,237.0,False,2008-12-06 08:00:00,2008-12-21 08:00:00,-548.0,-551.375
78,stressing tower,1.1.5.1.5.3,6,2.0,2010-07-27 08:00:00,2010-07-28 17:00:00,56.0,58.0,235.0,237.0,179.0,0.0,False,2008-12-15 08:00:00,2008-12-17 08:00:00,-589.0,-588.375
79,injection of tower,1.1.5.1.5.4,6,2.0,2010-07-29 08:00:00,2010-07-30 17:00:00,58.0,60.0,237.0,239.0,179.0,0.0,False,2008-12-17 08:00:00,2008-12-19 08:00:00,-589.0,-588.375
48,setting concrete 7,1.1.4.4.7,5,20.0,2010-07-29 08:00:00,2010-08-25 17:00:00,58.0,78.0,279.0,299.0,221.0,0.0,False,2008-12-17 08:00:00,2009-01-06 08:00:00,-589.0,-596.375
80,Finish,1.1.5.1.5.5,6,2.0,2010-08-02 08:00:00,2010-08-03 17:00:00,60.0,62.0,239.0,241.0,179.0,0.0,False,2008-12-19 08:00:00,2008-12-21 08:00:00,-591.0,-590.375
82,Pre installation,1.1.5.1.6.1,6,0.0,2010-08-03 17:00:00,2010-08-03 17:00:00,62.0,62.0,299.0,299.0,237.0,0.0,False,2008-12-21 08:00:00,2008-12-21 08:00:00,-590.375,-590.375
83,Installation tower,1.1.5.1.6.2,6,10.0,2010-08-04 08:00:00,2010-08-17 17:00:00,62.0,72.0,241.0,251.0,179.0,0.0,False,2008-12-21 08:00:00,2008-12-31 08:00:00,-591.0,-594.375
94,WEC 1,1.1.5.2.1,5,5.0,2010-08-06 08:00:00,2010-08-12 17:00:00,64.0,69.0,273.0,278.0,209.0,0.0,False,2008-12-23 08:00:00,2008-12-28 08:00:00,-591.0,-592.375
102,WEC 1,1.1.5.3.1,5,3.0,2010-08-13 08:00:00,2010-08-17 17:00:00,69.0,72.0,278.0,281.0,209.0,0.0,False,2008-12-28 08:00:00,2008-12-31 08:00:00,-593.0,-594.375
95,WEC 2,1.1.5.2.2,5,5.0,2010-08-13 08:00:00,2010-08-19 17:00:00,69.0,74.0,273.0,278.0,204.0,0.0,False,2008-12-28 08:00:00,2009-01-02 08:00:00,-593.0,-594.375
110,WEC 1,1.1.5.4.1,5,0.0,2010-08-17 17:00:00,2010-08-17 17:00:00,72.0,72.0,281.0,281.0,209.0,0.0,False,2008-12-31 08:00:00,2008-12-31 08:00:00,-594.375,-594.375
84,stressing tower,1.1.5.1.6.3,6,2.0,2010-08-18 08:00:00,2010-08-19 17:00:00,72.0,74.0,251.0,253.0,179.0,0.0,False,2008-12-31 08:00:00,2009-01-02 08:00:00,-595.0,-594.375
118,WEC 1,1.1.5.5.1,5,3.0,2010-08-18 08:00:00,2010-08-20 17:00:00,72.0,75.0,281.0,284.0,209.0,0.0,False,2008-12-31 08:00:00,2009-01-03 08:00:00,-595.0,-594.375
85,injection of tower,1.1.5.1.6.4,6,2.0,2010-08-20 08:00:00,2010-08-23 17:00:00,74.0,76.0,253.0,255.0,179.0,0.0,False,2009-01-02 08:00:00,2009-01-04 08:00:00,-595.0,-596.375
103,WEC 2,1.1.5.3.2,5,3.0,2010-08-20 08:00:00,2010-08-24 17:00:00,74.0,77.0,278.0,281.0,204.0,0.0,False,2009-01-02 08:00:00,2009-01-05 08:00:00,-595.0,-596.375
96,WEC 3,1.1.5.2.3,5,5.0,2010-08-20 08:00:00,2010-08-26 17:00:00,74.0,79.0,273.0,278.0,199.0,0.0,False,2009-01-02 08:00:00,2009-01-07 08:00:00,-595.0,-596.375
126,WEC 1,1.1.5.6.1,5,13.0,2010-08-23 08:00:00,2010-09-08 17:00:00,75.0,88.0,284.0,297.0,209.0,0.0,False,2009-01-03 08:00:00,2009-01-16 08:00:00,-597.0,-600.375
86,Finish,1.1.5.1.6.5,6,2.0,2010-08-24 08:00:00,2010-08-25 17:00:00,76.0,78.0,255.0,257.0,179.0,0.0,False,2009-01-04 08:00:00,2009-01-06 08:00:00,-597.0,-596.375
111,WEC 2,1.1.5.4.2,5,0.0,2010-08-24 17:00:00,2010-08-24 17:00:00,77.0,77.0,281.0,281.0,204.0,0.0,False,2009-01-05 08:00:00,2009-01-05 08:00:00,-596.375,-596.375
119,WEC 2,1.1.5.5.2,5,3.0,2010-08-25 08:00:00,2010-08-27 17:00:00,77.0,80.0,281.0,284.0,204.0,0.0,False,2009-01-05 08:00:00,2009-01-08 08:00:00,-597.0,-596.375
88,Pre installation,1.1.5.1.7.1,6,0.0,2010-08-25 17:00:00,2010-08-25 17:00:00,78.0,78.0,257.0,257.0,179.0,0.0,False,2009-01-06 08:00:00,2009-01-06 08:00:00,-596.375,-596.375
89,Installation tower,1.1.5.1.7.2,6,10.0,2010-08-26 08:00:00,2010-09-08 17:00:00,78.0,88.0,257.0,267.0,179.0,0.0,False,2009-01-06 08:00:00,2009-01-16 08:00:00,-597.0,-600.375
104,WEC 3,1.1.5.3.3,5,3.0,2010-08-27 08:00:00,2010-08-31 17:00:00,79.0,82.0,278.0,281.0,199.0,0.0,False,2009-01-07 08:00:00,2009-01-10 08:00:00,-597.0,-598.375
97,WEC 4,1.1.5.2.4,5,5.0,2010-08-27 08:00:00,2010-09-02 17:00:00,79.0,84.0,273.0,278.0,194.0,0.0,False,2009-01-07 08:00:00,2009-01-12 08:00:00,-597.0,-598.375
127,WEC 2,1.1.5.6.2,5,13.0,2010-08-30 08:00:00,2010-09-15 17:00:00,80.0,93.0,284.0,297.0,204.0,0.0,False,2009-01-08 08:00:00,2009-01-21 08:00:00,-599.0,-602.375
112,WEC 3,1.1.5.4.3,5,0.0,2010-08-31 17:00:00,2010-08-31 17:00:00,82.0,82.0,281.0,281.0,199.0,0.0,False,2009-01-10 08:00:00,2009-01-10 08:00:00,-598.375,-598.375
120,WEC 3,1.1.5.5.3,5,3.0,2010-09-01 08:00:00,2010-09-03 17:00:00,82.0,85.0,281.0,284.0,199.0,0.0,False,2009-01-10 08:00:00,2009-01-13 08:00:00,-599.0,-598.375
105,WEC 4,1.1.5.3.4,5,3.0,2010-09-03 08:00:00,2010-09-07 17:00:00,84.0,87.0,278.0,281.0,194.0,0.0,False,2009-01-12 08:00:00,2009-01-15 08:00:00,-599.0,-600.375
98,WEC 5,1.1.5.2.5,5,5.0,2010-09-03 08:00:00,2010-09-09 17:00:00,84.0,89.0,273.0,278.0,189.0,0.0,False,2009-01-12 08:00:00,2009-01-17 08:00:00,-599.0,-600.375
128,WEC 3,1.1.5.6.3,5,13.0,2010-09-06 08:00:00,2010-09-22 17:00:00,85.0,98.0,284.0,297.0,199.0,0.0,False,2009-01-13 08:00:00,2009-01-26 08:00:00,-601.0,-604.375
113,WEC 4,1.1.5.4.4,5,0.0,2010-09-07 17:00:00,2010-09-07 17:00:00,87.0,87.0,281.0,281.0,194.0,0.0,False,2009-01-15 08:00:00,2009-01-15 08:00:00,-600.375,-600.375
121,WEC 4,1.1.5.5.4,5,3.0,2010-09-08 08:00:00,2010-09-10 17:00:00,87.0,90.0,281.0,284.0,194.0,0.0,False,2009-01-15 08:00:00,2009-01-18 08:00:00,-601.0,-600.375
90,stressing tower,1.1.5.1.7.3,6,2.0,2010-09-09 08:00:00,2010-09-10 17:00:00,88.0,90.0,267.0,269.0,179.0,0.0,False,2009-01-16 08:00:00,2009-01-18 08:00:00,-601.0,-600.375
134,WEC 1,1.1.5.7.1,5,2.0,2010-09-09 08:00:00,2010-09-10 17:00:00,88.0,90.0,297.0,299.0,209.0,0.0,False,2009-01-16 08:00:00,2009-01-18 08:00:00,-601.0,-600.375
106,WEC 5,1.1.5.3.5,5,3.0,2010-09-10 08:00:00,2010-09-14 17:00:00,89.0,92.0,278.0,281.0,189.0,0.0,False,2009-01-17 08:00:00,2009-01-20 08:00:00,-601.0,-602.375
99,WEC 6,1.1.5.2.6,5,5.0,2010-09-10 08:00:00,2010-09-16 17:00:00,89.0,94.0,273.0,278.0,184.0,0.0,False,2009-01-17 08:00:00,2009-01-22 08:00:00,-601.0,-602.375
142,WEC 1,1.1.5.8.1,5,0.0,2010-09-10 17:00:00,2010-09-10 17:00:00,90.0,90.0,299.0,299.0,209.0,209.0,False,2009-01-18 08:00:00,2009-01-18 08:00:00,-600.375,-600.375
91,injection of tower,1.1.5.1.7.4,6,2.0,2010-09-13 08:00:00,2010-09-14 17:00:00,90.0,92.0,269.0,271.0,179.0,0.0,False,2009-01-18 08:00:00,2009-01-20 08:00:00,-603.0,-602.375
129,WEC 4,1.1.5.6.4,5,13.0,2010-09-13 08:00:00,2010-09-29 17:00:00,90.0,103.0,284.0,297.0,194.0,0.0,False,2009-01-18 08:00:00,2009-01-31 08:00:00,-603.0,-606.375
114,WEC 5,1.1.5.4.5,5,0.0,2010-09-14 17:00:00,2010-09-14 17:00:00,92.0,92.0,281.0,281.0,189.0,0.0,False,2009-01-20 08:00:00,2009-01-20 08:00:00,-602.375,-602.375
92,Finish,1.1.5.1.7.5,6,2.0,2010-09-15 08:00:00,2010-09-16 17:00:00,92.0,94.0,271.0,273.0,179.0,0.0,False,2009-01-20 08:00:00,2009-01-22 08:00:00,-603.0,-602.375
122,WEC 5,1.1.5.5.5,5,3.0,2010-09-15 08:00:00,2010-09-17 17:00:00,92.0,95.0,281.0,284.0,189.0,0.0,False,2009-01-20 08:00:00,2009-01-23 08:00:00,-603.0,-602.375
135,WEC 2,1.1.5.7.2,5,2.0,2010-09-16 08:00:00,2010-09-17 17:00:00,93.0,95.0,297.0,299.0,204.0,0.0,False,2009-01-21 08:00:00,2009-01-23 08:00:00,-603.0,-602.375
107,WEC 6,1.1.5.3.6,5,3.0,2010-09-17 08:00:00,2010-09-21 17:00:00,94.0,97.0,278.0,281.0,184.0,0.0,False,2009-01-22 08:00:00,2009-01-25 08:00:00,-603.0,-604.375
100,WEC 7,1.1.5.2.7,5,5.0,2010-09-17 08:00:00,2010-09-23 17:00:00,94.0,99.0,273.0,278.0,179.0,0.0,False,2009-01-22 08:00:00,2009-01-27 08:00:00,-603.0,-604.375
143,WEC 2,1.1.5.8.2,5,0.0,2010-09-17 17:00:00,2010-09-17 17:00:00,95.0,95.0,299.0,299.0,204.0,204.0,False,2009-01-23 08:00:00,2009-01-23 08:00:00,-602.375,-602.375
130,WEC 5,1.1.5.6.5,5,13.0,2010-09-20 08:00:00,2010-10-06 17:00:00,95.0,108.0,284.0,297.0,189.0,0.0,False,2009-01-23 08:00:00,2009-02-05 08:00:00,-605.0,-608.375
115,WEC 6,1.1.5.4.6,5,0.0,2010-09-21 17:00:00,2010-09-21 17:00:00,97.0,97.0,281.0,281.0,184.0,0.0,False,2009-01-25 08:00:00,2009-01-25 08:00:00,-604.375,-604.375
123,WEC 6,1.1.5.5.6,5,3.0,2010-09-22 08:00:00,2010-09-24 17:00:00,97.0,100.0,281.0,284.0,184.0,0.0,False,2009-01-25 08:00:00,2009-01-28 08:00:00,-605.0,-604.375
136,WEC 3,1.1.5.7.3,5,2.0,2010-09-23 08:00:00,2010-09-24 17:00:00,98.0,100.0,297.0,299.0,199.0,0.0,False,2009-01-26 08:00:00,2009-01-28 08:00:00,-605.0,-604.375
108,WEC 7,1.1.5.3.7,5,3.0,2010-09-24 08:00:00,2010-09-28 17:00:00,99.0,102.0,278.0,281.0,179.0,0.0,False,2009-01-27 08:00:00,2009-01-30 08:00:00,-605.0,-606.375
144,WEC 3,1.1.5.8.3,5,0.0,2010-09-24 17:00:00,2010-09-24 17:00:00,100.0,100.0,299.0,299.0,199.0,199.0,False,2009-01-28 08:00:00,2009-01-28 08:00:00,-604.375,-604.375
131,WEC 6,1.1.5.6.6,5,13.0,2010-09-27 08:00:00,2010-10-13 17:00:00,100.0,113.0,284.0,297.0,184.0,0.0,False,2009-01-28 08:00:00,2009-02-10 08:00:00,-607.0,-610.375
116,WEC 7,1.1.5.4.7,5,0.0,2010-09-28 17:00:00,2010-09-28 17:00:00,102.0,102.0,281.0,281.0,179.0,0.0,False,2009-01-30 08:00:00,2009-01-30 08:00:00,-606.375,-606.375
124,WEC 7,1.1.5.5.7,5,3.0,2010-09-29 08:00:00,2010-10-01 17:00:00,102.0,105.0,281.0,284.0,179.0,0.0,False,2009-01-30 08:00:00,2009-02-02 08:00:00,-607.0,-606.375
137,WEC 4,1.1.5.7.4,5,2.0,2010-09-30 08:00:00,2010-10-01 17:00:00,103.0,105.0,297.0,299.0,194.0,0.0,False,2009-01-31 08:00:00,2009-02-02 08:00:00,-607.0,-606.375
145,WEC 4,1.1.5.8.4,5,0.0,2010-10-01 17:00:00,2010-10-01 17:00:00,105.0,105.0,299.0,299.0,194.0,194.0,False,2009-02-02 08:00:00,2009-02-02 08:00:00,-606.375,-606.375
132,WEC 7,1.1.5.6.7,5,13.0,2010-10-04 08:00:00,2010-10-20 17:00:00,105.0,118.0,284.0,297.0,179.0,0.0,False,2009-02-02 08:00:00,2009-02-15 08:00:00,-609.0,-612.375
16,roads and hardstands,1.1.2.3.1,5,14.0,2009-03-16 08:00:00,2009-04-02 17:00:00,105.0,119.0,285.0,299.0,180.0,180.0,False,2009-02-02 08:00:00,2009-02-16 08:00:00,-42.0,-45.375
13,detailstudie,1.1.2.2.2,5,90.0,2009-03-16 08:00:00,2009-07-17 17:00:00,105.0,195.0,149.0,239.0,44.0,0.0,False,2009-02-02 08:00:00,2009-05-03 08:00:00,-42.0,-75.375
18,extra vergunningen,1.1.2.3.3,5,180.0,2009-03-23 08:00:00,2009-11-27 17:00:00,105.0,285.0,105.0,285.0,0.0,0.0,True,2009-02-02 08:00:00,2009-08-01 08:00:00,-49.0,-118.375
138,WEC 5,1.1.5.7.5,5,2.0,2010-10-07 08:00:00,2010-10-08 17:00:00,108.0,110.0,297.0,299.0,189.0,0.0,False,2009-02-05 08:00:00,2009-02-07 08:00:00,-609.0,-608.375
146,WEC 5,1.1.5.8.5,5,0.0,2010-10-08 17:00:00,2010-10-08 17:00:00,110.0,110.0,299.0,299.0,189.0,189.0,False,2009-02-07 08:00:00,2009-02-07 08:00:00,-608.375,-608.375
139,WEC 6,1.1.5.7.6,5,2.0,2010-10-14 08:00:00,2010-10-15 17:00:00,113.0,115.0,297.0,299.0,184.0,0.0,False,2009-02-10 08:00:00,2009-02-12 08:00:00,-611.0,-610.375
147,WEC 6,1.1.5.8.6,5,0.0,2010-10-15 17:00:00,2010-10-15 17:00:00,115.0,115.0,299.0,299.0,184.0,184.0,False,2009-02-12 08:00:00,2009-02-12 08:00:00,-610.375,-610.375
140,WEC 7,1.1.5.7.7,5,2.0,2010-10-21 08:00:00,2010-10-22 17:00:00,118.0,120.0,297.0,299.0,179.0,0.0,False,2009-02-15 08:00:00,2009-02-17 08:00:00,-613.0,-612.375
148,WEC 7,1.1.5.8.7,5,0.0,2010-10-22 17:00:00,2010-10-22 17:00:00,120.0,120.0,299.0,299.0,179.0,0.0,False,2009-02-17 08:00:00,2009-02-17 08:00:00,-612.375,-612.375
166,Finish,1.2,2,0.0,2010-10-22 17:00:00,2010-10-22 17:00:00,120.0,120.0,299.0,299.0,179.0,179.0,False,2009-02-17 08:00:00,2009-02-17 08:00:00,-612.375,-612.375
14,financieel plan,1.1.2.2.3,5,60.0,2009-07-20 08:00:00,2009-10-09 17:00:00,195.0,255.0,239.0,299.0,44.0,44.0,False,2009-05-03 08:00:00,2009-07-02 08:00:00,-78.0,-99.375
22,Mark NMP pipe,1.1.3.3,4,5.0,2010-01-01 08:00:00,2010-01-07 17:00:00,280.0,285.0,294.0,299.0,14.0,14.0,False,2009-07-27 08:00:00,2009-08-01 08:00:00,-158.0,-159.375
20,Roads and hardstands,1.1.3.1,4,14.0,2010-01-08 08:00:00,2010-01-27 17:00:00,285.0,299.0,285.0,299.0,0.0,0.0,True,2009-08-01 08:00:00,2009-08-15 08:00:00,-160.0,-165.375
